# PeNcIL – Planirani raspored aktivnosti

Schedule from MS Project, 2018-03-14 to 2018-05-30, 4 hours a day.
SWETeam

## Calendars

- Standard: Mon-Sun 16:00-20:00.

## Resources

| Resource |
| --- |
| Architect |
| Architecture Reviewer |
| Business-Process Analyst |
| Business Designer |
| Business-Model Reviewer |
| Code Reviewer |
| Configuration Manager |
| Course Developer |
| Database Designer |
| Deployment Manager |
| Design Reviewer |
| Designer |
| Implementer |
| Integration Tester |
| Performance Tester |
| Process Engineer |
| Project Manager |
| Requirements Reviewer |
| Stakeholder |
| System Administrator |
| System Analyst |
| System Integrator |
| System Tester |
| Technical Writer |
| Test Designer |
| Tool Smith |
| Use-Case Author |
| User-Interface Designer |
| Milan |

## Schedule

| ID | WBS | Task | Type | Duration | Start | Finish | Predecessors | Baseline start | Baseline finish | Baseline duration | Total slack | Free slack | Constraint |
| --- | --- | --- | --- | --- | --- | --- | --- | --- | --- | --- | --- | --- | --- |
| 1 | 1 | **Očekivani rezultati** |  | 76.25d | 2018-03-15 | 2018-05-30 |  | 1998-06-11 | 1998-10-19 | 186d | 0d |  |  |
| 2 | 1.1 | Početak projekta | milestone | 0d | 2018-03-15 | 2018-03-15 | 16SS | 1998-06-11 | 1998-06-11 | 0d | 76.25d |  | start no earlier than 2018-03-15 |
| 3 | 1.2 | Vizija sistema | milestone | 0d | 2018-03-21 | 2018-03-21 | 19 | 1998-06-17 | 1998-06-17 | 0d | 70d |  | start no earlier than 2018-03-21 |
| 4 | 1.3 | Dokument o zahtevima | milestone | 0d | 2018-04-04 | 2018-04-04 | 25 |  |  |  | 56d |  | finish no earlier than 2018-04-04 |
| 5 | 1.4 | Arhitekturni prototip | milestone | 0d | 2018-04-07 | 2018-04-07 | 26 |  |  |  | 53d |  | finish no earlier than 2018-04-07 |
| 6 | 1.5 | Prototip korisničkog interfejsa | milestone | 0d | 2018-04-11 | 2018-04-11 | 28 |  |  |  | 49d |  | finish no earlier than 2018-04-11 |
| 7 | 1.6 | Arhitekturni projekat | milestone | 0d | 2018-04-18 | 2018-04-18 | 29 | 1998-08-20 | 1998-08-20 | 0d | 42d |  | finish no earlier than 2018-04-18 |
| 8 | 1.7 | Detaljni projekat | milestone | 0d | 2018-05-02 | 2018-05-02 | 33 | 1998-10-06 | 1998-10-06 | 0d | 28d |  | finish no earlier than 2018-05-02 |
| 9 | 1.8 | Beta verzija | milestone | 0d | 2018-05-05 | 2018-05-05 | 34 | 1998-10-19 | 1998-10-19 | 0d | 25d |  | finish no earlier than 2018-05-05 |
| 10 | 1.9 | Plan testiranja | milestone | 0d | 2018-05-09 | 2018-05-09 | 35 |  |  |  | 21d |  | finish no earlier than 2018-05-09 |
| 11 | 1.10 | Izveštaj o testiranju | milestone | 0d | 2018-05-16 | 2018-05-16 | 41 |  |  |  | 14d |  | finish no earlier than 2018-05-16 |
| 12 | 1.11 | Konačna verzija | milestone | 0d | 2018-05-16 | 2018-05-16 | 38 |  |  |  | 14d |  | finish no earlier than 2018-05-16 |
| 13 | 1.12 | Korisničko uputstvo | milestone | 0d | 2018-05-29 | 2018-05-29 | 46 |  |  |  | 1d |  | finish no earlier than 2018-05-29 |
| 14 | 1.13 | Prezentacija proizvoda | milestone | 0d | 2018-05-30 | 2018-05-30 | 44 |  |  |  | 0d |  | finish no earlier than 2018-05-30 |
| 16 | 2 | **Faza planiranja projekta** |  | 14d | 2018-03-14 | 2018-03-28 |  | 1998-06-11 | 1998-06-17 | 10d | 0d |  |  |
| 17 | 2.1 | **Preliminarna iteracija** |  | 14d | 2018-03-14 | 2018-03-28 |  | 1998-06-11 | 1998-06-17 | 10d | 0d |  |  |
| 19 | 2.1.1 | Izrada vizije sistema |  | 4d | 2018-03-17 | 2018-03-21 |  | 1998-06-11 | 1998-06-17 | 10d | 0d |  |  |
| 20 | 2.1.2 | Modelovanje domena |  | 1d | 2018-03-21 | 2018-03-22 | 19 | 1998-06-11 | 1998-06-17 | 10d | 0d |  |  |
| 21 | 2.1.3 | Analiza slučajeva korišćenja |  | 6d | 2018-03-22 | 2018-03-28 | 20 | 1998-06-19 | 1998-06-23 | 6d | 0d |  |  |
| 23 | 3 | **Faza razrade projekta** |  | 21d | 2018-03-28 | 2018-04-18 | 16 | 1998-06-18 | 1998-08-20 | 92d | 0d |  |  |
| 24 | 3.1 | **Iteracija R1 - Razvoj arhitekturnog prototipa** |  | 21d | 2018-03-28 | 2018-04-18 |  | 1998-06-18 | 1998-07-20 | 46d | 0d |  |  |
| 25 | 3.1.1 | Izrada dokumenta o zahtevima |  | 7d | 2018-03-28 | 2018-04-04 |  | 1998-06-19 | 1998-06-25 | 10d | 14d | 0d |  |
| 26 | 3.1.2 | Implementacija arhitekturnog prototipa |  | 10d | 2018-03-28 | 2018-04-07 |  | 1998-07-01 | 1998-07-10 | 16d | 0d |  |  |
| 27 | 3.1.3 | Testiranje arhitekture |  | 1d | 2018-04-07 | 2018-04-08 | 26 | 1998-07-08 | 1998-07-16 | 14d | 0d |  |  |
| 28 | 3.1.4 | Implementacija prototipa korisničkog interfejsa |  | 3d | 2018-04-08 | 2018-04-11 | 27 | 1998-06-18 | 1998-07-20 | 46d | 0d |  |  |
| 29 | 3.1.5 | Izrada arhitekturnog projekta |  | 7d | 2018-04-11 | 2018-04-18 | 28 | 1998-06-23 | 1998-07-06 | 20d | 0d |  |  |

| ID | WBS | Task | Duration | Start | Finish | Predecessors | Baseline start | Baseline finish | Baseline duration | Total slack | Free slack |
| --- | --- | --- | --- | --- | --- | --- | --- | --- | --- | --- | --- |
| 31 | 4 | **Faza izrade projekta** | 28d | 2018-04-18 | 2018-05-16 | 23 | 1998-08-21 | 1998-10-06 | 66d | 0d |  |
| 32 | 4.1 | **Iteracija I1 - Razvoj beta verzije** | 23d | 2018-04-18 | 2018-05-11 |  | 1998-08-21 | 1998-09-04 | 22d | 0d |  |
| 33 | 4.1.1 | Izrada detaljnog projekta | 14d | 2018-04-18 | 2018-05-02 |  |  |  |  | 9d | 0d |
| 34 | 4.1.2 | Implementacija beta verzije | 17d | 2018-04-18 | 2018-05-05 |  | 1998-08-24 | 1998-08-31 | 12d | 0d |  |
| 35 | 4.1.3 | Izrada plana testiranja | 4d | 2018-05-05 | 2018-05-09 | 34 |  |  |  | 0d |  |
| 36 | 4.1.4 | Testiranje sistema | 2d | 2018-05-09 | 2018-05-11 | 35 | 1998-08-24 | 1998-09-02 | 16d | 0d |  |
| 37 | 4.1.5 | Izrada izveštaja o testiranju | 2d | 2018-05-09 | 2018-05-11 | 35 | 1998-08-21 | 1998-09-04 | 22d | 0d |  |
| 38 | 4.2 | **Iteracija I2 - Razvoj konačne verzije** | 5d | 2018-05-11 | 2018-05-16 | 32 | 1998-09-07 | 1998-09-21 | 22d | 0d |  |
| 39 | 4.2.1 | Implementacija konačne verzije | 4d | 2018-05-11 | 2018-05-15 |  | 1998-09-08 | 1998-09-15 | 12d | 0d |  |
| 40 | 4.2.2 | Testiranje konačne verzije | 1d | 2018-05-15 | 2018-05-16 | 39 | 1998-09-08 | 1998-09-17 | 16d | 0d |  |
| 41 | 4.2.3 | Ažuriranje izveštaja o testiranju | 1d | 2018-05-15 | 2018-05-16 | 39 | 1998-09-07 | 1998-09-21 | 22d | 0d |  |
| 43 | 5 | **Faza okončanja projekta** | 14d | 2018-05-16 | 2018-05-30 | 38 | 1998-10-07 | 1998-10-19 | 18d | 0d |  |
| 44 | 5.1 | **Iteracija O1 - Instalacija sistema** | 14d | 2018-05-16 | 2018-05-30 |  | 1998-10-07 | 1998-10-19 | 18d | 0d |  |
| 45 | 5.1.1 | Sređivanje projektne dokumentacije | 7d | 2018-05-16 | 2018-05-23 |  |  |  |  | 0d |  |
| 46 | 5.1.2 | Izrada korisničkog uputstva | 6d | 2018-05-23 | 2018-05-29 | 45 | 1998-10-07 | 1998-10-19 | 18d | 0d |  |
| 47 | 5.1.3 | Instalacija sistema | 1d | 2018-05-29 | 2018-05-30 | 46 |  |  |  | 0d |  |
